# Simple Project Plan

Schedule from MS Project, 2012-08-09 to 2022-06-30, costs in ¥, A marks actual dates.

## Calendars

- Standard: Mon-Fri 08:00-12:00, 13:00-17:00; Sat-Sun off.

## Resources

| Resource | Notes |
| --- | --- |
| 潘仲菁 | 承担第一周额外任务，固过渡分配 |
| 施芳怡 |  |
| 杨庆贤 |  |
| 余张龙 | 第一周请假，未参与工时分配 |
| 周文涛 |  |

## Schedule

| ID | WBS | Task | Type | Duration | Start | Finish | Predecessors | Complete | Actual finish | Constraint | Deadline | Resources | Work | Actual work | Cost | Actual cost | 负责人 | 输入 | 输出 |
| --- | --- | --- | --- | --- | --- | --- | --- | --- | --- | --- | --- | --- | --- | --- | --- | --- | --- | --- | --- |
| 1 | 1 | **项目启动** |  | 9d? | 2022-02-23 08:00 A | 2022-03-06 17:00 |  | 100% | 2022-03-05 09:00 |  |  |  | 72h | 72h | 5,624.52 | 5,624.52 |  |  |  |
| 2 | 1.1 | **前期工作准备** |  | 4d? | 2022-02-23 08:00 A | 2022-02-26 17:00 |  | 100% | 2022-02-24 09:12 |  |  |  | 17h | 17h | 1,448.74 | 1,448.74 |  |  |  |
| 3 | 1.1.1 | 确认组员 | milestone, manual | 0.12d | 2022-02-23 08:00 A | 2022-02-23 09:00 A |  | 100% |  |  |  | 潘仲菁; 施芳怡; 杨庆贤; 余张龙; 周文涛 | 5h | 5h | 426.1 | 426.1 | G25 | 组员信息 | 组员信息 |
| 4 | 1.1.2 | 确认选题 | manual | 0.12d | 2022-02-23 08:00 A | 2022-02-23 09:00 A |  | 100% |  |  | 2022-03-24 17:00 | 潘仲菁; 杨庆贤; 施芳怡; 余张龙; 周文涛 | 5h | 5h | 426.1 | 426.1 | G25 | 选题 | 项目选题 |
| 5 | 1.1.3 | 0224小组会议 | manual | 0.15d | 2022-02-24 08:00 A | 2022-02-24 09:12 A | 4, 3 | 100% |  |  |  | 施芳怡; 潘仲菁; 杨庆贤; 余张龙; 周文涛 | 6h | 6h | 511.32 | 511.32 | G25 | 小组会议 | 会议纪要 |
| 6 | 1.1.4 | 0224会议纪要 | manual | 0.12d | 2022-02-24 08:00 A | 2022-02-24 09:00 A | 5 | 100% |  |  |  | 周文涛 | 1h | 1h | 85.22 | 85.22 | 周文涛 | 小组会议 | 会议纪要 |
| 7 | 1.2 | **项目章程** |  | 7d | 2022-02-24 08:00 A | 2022-03-04 17:00 |  | 100% | 2022-03-04 11:00 |  |  |  | 36h | 36h | 2,556.6 | 2,556.6 |  |  |  |
| 8 | 1.2.1 | 起草项目章程 | manual | 1d | 2022-02-24 08:00 A | 2022-02-24 17:00 A | 3, 4, 5 | 100% |  |  |  | 潘仲菁; 施芳怡 | 8h | 8h | 681.76 | 681.76 | 潘仲菁 | 用户需求文档 | 项目章程大纲 |
| 9 | 1.2.2 | 项目章程0.1 | manual | 0.25d | 2022-02-25 08:00 A | 2022-02-25 10:00 A | 5 | 100% |  |  |  | 潘仲菁 | 2h | 2h | 170.44 | 170.44 | 潘仲菁 | 项目章程大纲 | 项目章程0.1 |
| 10 | 1.2.3 | 0226小组会议 | manual | 0.19d | 2022-02-26 08:00 A | 2022-02-26 09:30 A |  | 100% |  |  |  | 周文涛; 施芳怡; 潘仲菁; 余张龙; 杨庆贤 | 5h | 5h | 426.1 | 426.1 | 周文涛 | 小组会议 | 会议纪要 |
| 11 | 1.2.4 | 0226会议纪要 | manual | 1d | 2022-02-26 08:00 A | 2022-02-26 17:00 A |  | 100% |  |  |  | 周文涛; 潘仲菁 | 4h | 4h | 340.88 | 340.88 | 周文涛 | 小组会议 | 会议纪要 |
| 12 | 1.2.5 | 项目章程0.2 | manual | 1d | 2022-02-26 08:00 A | 2022-02-26 17:00 A | 9 | 100% |  |  |  | 潘仲菁; 施芳怡; 杨庆贤; 余张龙; 周文涛 | 8h | 8h | 170.44 | 170.44 | 潘仲菁 | 项目章程0.1 | 项目章程0.2 |
| 13 | 1.2.6 | 0303小组会议 | manual | 0.12d | 2022-03-03 08:00 A | 2022-03-03 09:00 A |  | 100% |  |  |  | 潘仲菁; 施芳怡; 杨庆贤; 余张龙; 周文涛 | 5h | 5h | 426.1 | 426.1 | 周文涛 | 小组会议 | 会议纪要 |
| 14 | 1.2.7 | 0303会议纪要 | manual | 0.12d | 2022-03-03 08:00 A | 2022-03-03 09:00 A |  | 100% |  |  |  | 周文涛 | 1h | 1h | 85.22 | 85.22 | 周文涛 | 小组会议 | 会议纪要 |
| 15 | 1.2.8 | 项目章程0.3 | manual | 0.38d | 2022-03-04 08:00 A | 2022-03-04 11:00 A | 11 | 100% |  |  |  | 潘仲菁; 施芳怡 | 3h | 3h | 255.66 | 255.66 | 潘仲菁 | 项目章程0.2 | 项目章程0.3 |
| 16 | 1.3 | **可行性分析报告** |  | 7d | 2022-02-25 08:00 A | 2022-03-06 17:00 |  | 100% | 2022-03-05 09:00 |  |  |  | 16h | 16h | 1,363.52 | 1,363.52 |  |  |  |
| 17 | 1.3.1 | 起草可行性分析 | manual | 0.12d | 2022-02-25 08:00 A | 2022-02-25 09:00 A | 3, 4, 5 | 100% |  |  |  | 潘仲菁 | 1h | 1h | 85.22 | 85.22 | 潘仲菁 | 项目章程 | 可行性分析大纲 |
| 18 | 1.3.2 | 可行性分析报告0.1 | manual | 1d | 2022-02-25 08:00 A | 2022-02-25 17:00 A | 17 | 100% |  | start no earlier than 2022-02-25 08:00 |  | 施芳怡; 潘仲菁; 杨庆贤; 余张龙; 周文涛 | 8h | 8h | 681.76 | 681.76 | 施芳怡 | 可行性分析大纲 | 可行性分析0.1 |
| 19 | 1.3.3 | 可行性分析报告0.2 | manual | 0.38d | 2022-02-26 08:00 A | 2022-02-26 11:00 A |  | 100% |  |  |  | 施芳怡; 潘仲菁 | 3h | 3h | 255.66 | 255.66 | 施芳怡 | 可行性分析0.1 | 可行性分析0.2 |
| 20 | 1.3.4 | 可行性分析报告0.3 | manual | 0.38d | 2022-03-03 08:00 A | 2022-03-03 11:00 A | 19 | 100% |  |  |  | 施芳怡 | 3h | 3h | 255.66 | 255.66 | 施芳怡 | 可行性分析0.2 | 可行性分析0.3 |
| 21 | 1.3.5 | 可行性分析报告0.4 | manual | 0.12d | 2022-03-05 08:00 A | 2022-03-05 09:00 A |  | 100% |  |  |  | 潘仲菁 | 1h | 1h | 85.22 | 85.22 | 潘仲菁 | 可行性分析0.3 | 可行性分析0.4 |
| 22 | 1.4 | **美工** |  | 6d | 2022-02-25 08:00 A | 2022-03-04 17:00 |  | 100% | 2022-03-04 09:00 |  |  |  | 3h | 3h | 255.66 | 255.66 |  |  |  |
| 23 | 1.4.1 | 设计Logo、产品名 | manual | 0.25d | 2022-02-25 08:00 A | 2022-02-25 10:00 A |  | 100% |  | start no earlier than 2022-02-25 08:00 |  | 施芳怡 | 2h | 2h | 170.44 | 170.44 | 施芳怡 | 设计理念 | Logo与产品名 |
| 24 | 1.4.2 | 美化Logo设计 | manual | 0.12d | 2022-03-04 08:00 A | 2022-03-04 09:00 A |  | 100% |  |  |  | 施芳怡 | 1h | 1h | 85.22 | 85.22 | 施芳怡 | Logo设计 | Logo |

Notes:
- 2: √
- 3: √
- 4: √
- 5: √
- 6: √
- 7: √
- 8: √
- 9: √
- 10: √
- 11: √
- 12: √
- 13: √
- 14: √
- 15: √
- 16: √
- 17: √
- 18: √
- 19: √
- 20: √
- 21: √
- 22: √
- 23: √
- 24: √

| ID | WBS | Task | Type | Duration | Start | Finish | Predecessors | Complete | Remaining | Actual start | Constraint | Resources | Work | Actual work | Cost | Actual cost | 负责人 | 输入 | 输出 |
| --- | --- | --- | --- | --- | --- | --- | --- | --- | --- | --- | --- | --- | --- | --- | --- | --- | --- | --- | --- |
| 25 | 2 | **项目计划** |  | 45d? | 2022-02-25 08:00 | 2022-04-28 17:00 |  | 22% | 35.11d? | 2022-02-24 08:00 |  |  | 352.25h | 63.25h | 5,539.3 | 5,539.3 |  |  |  |
| 26 | 2.1 | **需求工程项目计划** |  | 11d? | 2022-02-24 08:00 A | 2022-03-10 17:00 |  | 83% | 1.89d? |  |  |  | 63.25h | 58.25h | 5,113.2 | 5,113.2 |  |  |  |
| 27 | 2.1.1 | **需求工程项目计划初稿** |  | 3d? | 2022-02-24 08:00 A | 2022-02-27 17:00 A |  | 100% |  |  |  |  | 34.25h | 34.25h | 3,067.92 | 3,067.92 |  |  |  |
| 28 | 2.1.1.1 | 起草项目工程计划书目录大纲 | manual | 0.25d | 2022-02-25 08:00 A | 2022-02-25 10:00 A | 3, 4, 5 | 100% |  |  | finish no earlier than 2022-02-25 17:00 | 潘仲菁 | 2h | 2h | 170.44 | 170.44 | 潘仲菁 | 项目章程 | 项目工程计划书大纲 |
| 29 | 2.1.1.2 | 项目工程计划书0.1 | manual | 1d | 2022-02-25 08:00 A | 2022-02-25 17:00 A |  | 100% |  |  |  | 潘仲菁 | 2h | 2h | 170.44 | 170.44 |  |  | 项目工程计划书0.1 |
| 30 | 2.1.1.3 | 起草风险管理子计划、沟通管理子计划 | manual | 0.38d | 2022-02-24 08:00 A | 2022-02-24 11:00 A |  | 100% |  |  |  | 周文涛 | 3h | 3h | 255.66 | 255.66 | 周文涛 | 项目工程计划书0.1 | 风险子计划 沟通子计划 |
| 31 | 2.1.1.4 | 起草成本管理子计划、WBS图 | manual | 0.38d | 2022-02-24 08:00 A | 2022-02-24 11:00 A |  | 100% |  |  |  | 杨庆贤 | 3h | 3h | 255.66 | 255.66 | 杨庆贤 | 项目工程计划书0.1 | 成本子计划 WBS图 |
| 32 | 2.1.1.5 | 撰写风险管理子计划、沟通管理子计划 | manual | 0.38d | 2022-02-25 08:00 A | 2022-02-25 11:00 A |  | 100% |  |  |  | 周文涛 | 3h | 3h | 255.66 | 255.66 | 周文涛 | 项目工程计划书0.1 | 风险子计划 沟通子计划 |
| 33 | 2.1.1.6 | 撰写成本管理子计划、WBS图 | manual | 0.38d | 2022-02-25 08:00 A | 2022-02-25 11:00 A |  | 100% |  |  |  | 杨庆贤 | 3h | 3h | 255.66 | 255.66 | 杨庆贤 | 项目工程计划书0.1 |  |
| 34 | 2.1.1.7 | 撰写质量管理子计划、人力资源管理子计划、范围管理子计划 | manual | 0.38d | 2022-02-25 08:00 A | 2022-02-25 11:00 A |  | 100% |  |  |  | 潘仲菁 | 3h | 3h | 255.66 | 255.66 | 潘仲菁 | 项目工程计划书0.1 | 质量子计划 人力资源子计划 范围子计划 |
| 35 | 2.1.1.8 | 绘制OBS图 | manual | 0.38d | 2022-02-25 08:00 A | 2022-02-25 11:00 A |  | 100% |  |  |  | 杨庆贤 | 3h | 3h | 255.66 | 255.66 | 杨庆贤 | 项目工程计划书0.1 | OBS图 |
| 36 | 2.1.1.9 | 项目工程计划书0.2 | manual | 0.38d | 2022-02-26 08:00 A | 2022-02-26 11:00 A |  | 100% |  |  |  | 潘仲菁; 施芳怡; 杨庆贤; 余张龙; 周文涛 | 6.25h | 6.25h | 681.76 | 681.76 | 潘仲菁 | 项目工程计划书0.1 | 项目工程计划书0.2 |
| 37 | 2.1.1.10 | 制作PPT（项目章程、项目工程计划书） | manual | 0.25d | 2022-02-26 08:00 A | 2022-02-26 10:00 A |  | 100% |  |  |  | 潘仲菁 | 2h | 2h | 170.44 | 170.44 | 潘仲菁 | 项目工程计划书0.2 | PPT0.1 |
| 38 | 2.1.1.11 | 制作PPT（剩余内容） | manual | 0.25d | 2022-02-27 08:00 A | 2022-02-27 10:00 A |  | 100% |  |  |  | 施芳怡 | 2h | 2h | 170.44 | 170.44 | 施芳怡 | 项目工程计划书0.2 可行性分析0.2 项目章程0.2 0224/0226会议纪要 | PPT0.2 |
| 39 | 2.1.1.12 | 项目工程计划书0.3 | manual | 2d | 2022-02-26 08:00 A | 2022-02-27 17:00 A |  | 100% |  |  |  | 潘仲菁 | 2h | 2h | 170.44 | 170.44 | 潘仲菁 | 项目工程计划书0.3 |  |
| 40 | 2.1.2 | **需求工程项目计划终稿** |  | 7d? | 2022-03-02 08:00 | 2022-03-10 17:00 |  | 62% | 2.67d? | 2022-03-04 08:00 |  |  | 29h | 24h | 2,045.28 | 2,045.28 |  |  |  |
| 41 | 2.1.2.1 | 修改成本、WBS图、OBS图 | manual | 0.38d | 2022-03-04 08:00 A | 2022-03-04 11:00 A |  | 100% |  |  |  | 杨庆贤 | 3h | 3h | 255.66 | 255.66 | 杨庆贤 | 项目工程计划书0.3 | 成本子计划 |
| 42 | 2.1.2.2 | 修改风险管理子计划、沟通管理子计划 | manual | 0.25d | 2022-03-04 08:00 A | 2022-03-04 10:00 A |  | 100% |  |  |  | 周文涛 | 2h | 2h | 170.44 | 170.44 | 周文涛 | 项目工程计划书0.3 | 风险沟通子计划0.2 |
| 43 | 2.1.2.3 | 修改质量管理、范围管理、人力资源管理子计划 | manual | 0.25d | 2022-03-04 08:00 A | 2022-03-04 10:00 A |  | 100% |  |  |  | 潘仲菁 | 2h | 2h | 170.44 | 170.44 | 潘仲菁 | 项目工程计划书0.3 | 质量范围人力资源子计划0.2 |
| 44 | 2.1.2.4 | 增加采购子计划 | manual | 0.38d | 2022-03-04 08:00 A | 2022-03-04 11:00 A |  | 100% |  |  |  | 余张龙 | 3h | 3h | 255.66 | 255.66 | 余张龙 | 项目工程计划书0.3 | 采购子计划0.2 |
| 45 | 2.1.2.5 | 项目工程计划书0.4 | manual | 1d | 2022-03-05 08:00 A | 2022-03-05 17:00 A |  | 100% |  |  |  | 潘仲菁 | 2h | 2h | 170.44 | 170.44 |  |  | 项目工程计划书0.4 |
| 46 | 2.1.2.6 | 更新配置文件跟踪记录 | manual | 0.25d | 2022-03-06 08:00 A | 2022-03-06 10:00 A |  | 100% |  |  |  | 余张龙 | 2h | 2h | 170.44 | 170.44 | 余张龙 | 文档更新记录 | 配制记录 |
| 47 | 2.1.2.7 | 0305小组会议 | manual | 0.12d | 2022-03-07 08:00 A | 2022-03-07 09:00 A |  | 100% |  |  |  | 潘仲菁; 施芳怡; 杨庆贤; 余张龙; 周文涛 | 5h | 5h | 426.1 | 426.1 | G25 | 小组会议 | 会议纪要 |
| 48 | 2.1.2.8 | 0305会议纪要 | manual | 0.12d | 2022-03-05 08:00 A | 2022-03-05 09:00 A |  | 100% |  |  |  | 周文涛 | 1h | 1h | 85.22 | 85.22 | 周文涛 | 会议纪要 | 会议纪要 |
| 49 | 2.1.2.9 | 需求工程项目计划0.5 | manual | 0.25d | 2022-03-05 08:00 A | 2022-03-05 10:00 A |  | 100% |  |  |  | 潘仲菁 | 2h | 2h | 170.44 | 170.44 | 潘仲菁 | 需求工程项目计划0.4 | 需求工程项目计划0.5 |
| 50 | 2.1.2.10 | 修改PPT | manual | 0.25d | 2022-03-05 08:00 A | 2022-03-05 10:00 A |  | 100% |  |  |  | 施芳怡 | 2h | 2h | 170.44 | 170.44 | 施芳怡 | 需求工程项目计划0.5 | PPT |
| 51 | 2.1.2.11 | 课堂评审 | manual | 1d | 2022-03-09 08:00 | 2022-03-09 17:00 |  |  |  |  |  | 潘仲菁; 施芳怡; 杨庆贤; 余张龙; 周文涛 | 5h |  |  |  | 潘仲菁 | 需求工程项目计划0.5 | 评审结果 |
| 52 | 2.1.2.12 | 提交需求工程项目计划 | milestone, manual | 1d | 2022-03-09 08:00 | 2022-03-09 17:00 |  |  |  |  |  |  |  |  |  |  | 潘仲菁 |  |  |

Notes:
- 25: √
- 26: √
- 27: √
- 28: √
- 30: √
- 31: √
- 32: √
- 33: √
- 34: √
- 35: √
- 36: √
- 37: √
- 38: √
- 41: √
- 42: √
- 43: √
- 44: √
- 45: √
- 46: √
- 47: √
- 48: √
- 49: √
- 50: √

| ID | WBS | Task | Type | Duration | Start | Finish | Predecessors | Complete | Actual finish | Resources | Work | Actual work | Cost | Actual cost | 负责人 | Text2 | Text3 | Text4 |
| --- | --- | --- | --- | --- | --- | --- | --- | --- | --- | --- | --- | --- | --- | --- | --- | --- | --- | --- |
| 53 | 2.2 | **甘特图** |  | 5d? | 2022-02-25 08:00 A | 2022-03-03 17:00 |  | 100% | 2022-03-02 11:00 |  | 5h | 5h | 426.1 | 426.1 |  |  |  |  |
| 54 | 2.2.1 | 甘特图0.1 | manual | 0.25d | 2022-02-25 08:00 A | 2022-02-25 10:00 A |  | 100% |  | 潘仲菁 | 2h | 2h | 170.44 | 170.44 | 潘仲菁 |  |  |  |
| 55 | 2.2.2 | 甘特图0.2 | manual | 0.38d | 2022-03-02 08:00 A | 2022-03-02 11:00 A |  | 100% |  | 潘仲菁 | 3h | 3h | 255.66 | 255.66 | 潘仲菁 |  |  |  |
| 56 | 2.3 | **UML** |  | 36d | 2022-03-10 08:00 | 2022-04-28 17:00 |  |  |  |  | 284h |  |  |  |  | 韩艳丽 | UML作业 | UML作业 |
| 57 | 2.3.1 | **UML概述** |  | 5d | 2022-03-10 08:00 | 2022-03-16 17:00 |  |  |  |  | 69h |  |  |  |  | 韩艳丽 | UML概述 | UML概述 |
| 58 | 2.3.1.1 | 翻转课堂1 | manual | 5d | 2022-03-10 08:00 | 2022-03-16 17:00 |  |  |  |  | 49h |  |  |  |  |  | 翻转课堂1 | 翻转课堂1 |
| 59 | 2.3.1.2 | 翻转课堂评审 | manual | 1d | 2022-03-16 08:00 | 2022-03-16 17:00 |  |  |  |  | 20h |  |  |  |  |  |  |  |
| 60 | 2.3.2 | **UML工具：Rational Rose** |  | 5d | 2022-03-17 08:00 | 2022-03-23 17:00 |  |  |  |  | 40h |  |  |  |  | 韩艳丽 | UML工具：Rational Rose | UML工具：Rational Rose |
| 61 | 2.3.2.1 | 翻转课堂2 | manual | 5d | 2022-03-17 08:00 | 2022-03-23 17:00 |  |  |  |  | 20h |  |  |  |  | 安俊梦 | 模块要求 | 翻转课堂2 v0.1.0 |
| 62 | 2.3.2.2 | 翻转课堂评审 | manual | 1d | 2022-03-23 08:00 | 2022-03-23 17:00 |  |  |  |  | 20h |  |  |  |  | 韩艳丽 | 翻转课堂PPT | 翻转课堂演示 |
| 63 | 2.3.3 | **UML基础I（用例图、类图等）** |  | 5d | 2022-03-24 08:00 | 2022-03-30 17:00 | 57, 60 |  |  |  | 40h |  |  |  |  | 韩艳丽 | UML基础I：UML图制作 | UML基础I：UML图制作 |
| 64 | 2.3.3.1 | 翻转课堂3 | manual | 6d | 2022-03-23 08:00 | 2022-03-30 17:00 |  |  |  |  | 20h |  |  |  |  | 徐烨 | 模块要求 | 翻转课堂 |
| 65 | 2.3.3.2 | 翻转课堂评审 | manual | 0.12d | 2022-03-30 08:00 | 2022-03-30 09:00 |  |  |  |  | 20h |  |  |  |  | 韩艳丽 | 翻转课堂 | 翻转课堂演示 |
| 66 | 2.3.4 | **UML基础II（界面原型）** |  | 24d | 2022-03-06 17:00 | 2022-04-07 17:00 | 63 |  |  |  | 40h |  |  |  |  | 徐烨 | UML基础II：界面原型 | UML基础II：界面原型 |
| 67 | 2.3.4.1 | 翻转课堂4 | manual | 5d | 2022-03-31 08:00 | 2022-04-06 17:00 |  |  |  |  | 20h |  |  |  |  | 韩艳丽 | 模块要求 | 翻转课堂 |
| 68 | 2.3.4.2 | 翻转课堂评审 | manual | 1d | 2022-04-06 08:00 | 2022-04-06 17:00 |  |  |  |  | 20h |  |  |  |  | 韩艳丽 | 翻转课堂 | 翻转课堂演示 |
| 69 | 2.3.5 | **UML基础III（对象图等）** |  | 28d | 2022-03-06 17:00 | 2022-04-13 17:00 | 66 |  |  |  | 40h |  |  |  |  | 王天宇 | UML基础III：对象图，构件图和包图 | UML基础III：对象图，构件图和包图 |
| 70 | 2.3.5.1 | 翻转课堂5 | manual | 5d | 2022-04-07 08:00 | 2022-04-13 17:00 |  |  |  |  | 20h |  |  |  |  | 周鑫杰 | 模块要求 | 翻转课堂 |
| 71 | 2.3.5.2 | 翻转课堂评审 | manual | 1d | 2022-04-13 08:00 | 2022-04-13 17:00 |  |  |  |  | 20h |  |  |  |  | 韩艳丽 | 翻转课堂 | 翻转课堂演示 |
| 72 | 2.3.6 | **UML基础IIII（综合应用和问题解答）** |  | 11d | 2022-04-14 08:00 | 2022-04-28 17:00 | 69 |  |  |  | 55h |  |  |  |  | 王天宇 | UML基础IIII：综合应用和问题解答 | UML基础IIII：综合应用和问题解答 |
| 73 | 2.3.6.1 | 翻转课堂 | manual | 3.12d | 2022-04-14 08:00 | 2022-04-19 09:00 |  |  |  |  | 15h |  |  |  |  | 徐烨 | 模块要求 | 翻转课堂 |
| 74 | 2.3.6.2 | 翻转课堂演示 | manual | 0.12d | 2022-04-20 08:00 | 2022-04-20 09:00 |  |  |  |  | 20h |  |  |  |  | 韩艳丽 | 翻转课堂 | 翻转课堂演示 |
| 75 | 2.3.6.3 | UML基础知识测试 | milestone, manual | 1d | 2022-04-27 08:00 | 2022-04-27 17:00 |  |  |  |  | 20h |  |  |  |  |  |  |  |
| 76 | 3 | **项目执行** |  | 21d? | 2022-04-28 08:00 | 2022-05-26 17:00 |  |  |  |  | 323h |  | 500 |  |  |  |  |  |
| 77 | 3.1 | **需求开发** |  | 20d? | 2022-04-28 08:00 | 2022-05-25 17:00 |  |  |  |  | 218h |  | 500 |  |  |  |  |  |
| 78 | 3.1.1 | 小组例会 | manual | 1d? | 2022-04-28 08:00 | 2022-04-28 17:00 |  |  |  |  | 20h |  |  |  |  |  |  |  |
| 79 | 3.1.2 | 会议纪要 | manual | 1d? | 2022-04-28 08:00 | 2022-04-28 17:00 |  |  |  |  | 20h |  |  |  |  |  |  |  |

Notes:
- 54: √
- 55: √
- 56: 待定

| ID | WBS | Task | Type | Duration | Start | Finish | Constraint | Work |
| --- | --- | --- | --- | --- | --- | --- | --- | --- |
| 80 | 3.1.3 | **需求获取** |  | 46d | 2022-03-03 08:00 | 2022-05-05 17:00 |  | 80h |
| 81 | 3.1.3.1 | 编写项目视图与范围 | manual | 5d | 2022-04-28 08:00 | 2022-05-04 17:00 |  |  |
| 82 | 3.1.3.2 | 用户群分类 | manual | 5d | 2022-04-28 08:00 | 2022-05-04 17:00 |  | 20h |
| 83 | 3.1.3.3 | 选择产品代表 | manual | 5d | 2022-04-28 08:00 | 2022-05-04 17:00 | finish no earlier than 2022-05-04 17:00 | 20h |
| 84 | 3.1.3.4 | 建立核心队伍 | manual | 5d | 2022-04-28 08:00 | 2022-05-04 17:00 |  | 20h |
| 85 | 3.1.3.5 | 分析用户工作流程 | manual | 5d | 2022-04-28 08:00 | 2022-05-04 17:00 |  | 20h |
| 86 | 3.1.4 | **需求分析** |  | 50d | 2022-03-03 08:00 | 2022-05-11 17:00 |  | 45h |
| 87 | 3.1.4.1 | 小组例会 | manual | 1d | 2022-04-28 08:00 | 2022-04-28 17:00 |  | 15h |
| 88 | 3.1.4.2 | 会议纪要 | manual | 1d | 2022-04-28 08:00 | 2022-04-28 17:00 |  | 15h |
| 89 | 3.1.4.3 | 原型设计 | manual | 5d | 2022-04-28 08:00 | 2022-05-04 17:00 |  |  |
| 90 | 3.1.4.4 | **确定需求优先级** |  | 6d | 2022-05-04 08:00 | 2022-05-11 17:00 |  | 15h |
| 91 | 3.1.4.4.1 | 确定需求优先级 | manual | 6d | 2022-05-04 08:00 | 2022-05-11 17:00 |  | 15h |
| 92 | 3.1.4.5 | 为需求建立模型 | manual | 6d | 2022-05-04 08:00 | 2022-05-11 17:00 |  |  |
| 93 | 3.1.4.6 | 编写数据字典 | manual | 6d | 2022-05-04 08:00 | 2022-05-11 17:00 |  |  |
| 94 | 3.1.5 | **需求规格说明** |  | 11d | 2022-05-11 08:00 | 2022-05-25 17:00 |  |  |
| 95 | 3.1.5.1 | 小组例会 | manual | 1d | 2022-05-11 08:00 | 2022-05-11 17:00 |  |  |
| 96 | 3.1.5.2 | 会议纪要 | manual | 1d | 2022-05-11 08:00 | 2022-05-11 17:00 |  |  |
| 97 | 3.1.5.3 | **编写需求规格说明书初稿** |  | 6d | 2022-05-11 08:00 | 2022-05-18 17:00 |  |  |
| 98 | 3.1.5.3.1 | 小组例会 | manual | 1d? | 2022-05-11 08:00 | 2022-05-11 17:00 |  |  |
| 99 | 3.1.5.3.2 | 会议纪要 | manual | 1d? | 2022-05-11 08:00 | 2022-05-11 17:00 |  |  |
| 100 | 3.1.5.4 | **编写需求规格说明书终稿** |  | 6d | 2022-05-18 08:00 | 2022-05-25 17:00 |  |  |
| 101 | 3.1.5.4.1 | 小组例会 | manual | 1d? | 2022-05-18 08:00 | 2022-05-18 17:00 |  |  |
| 102 | 3.1.5.4.2 | 会议纪要 | manual | 1d? | 2022-05-18 08:00 | 2022-05-18 17:00 |  |  |
| 103 | 3.1.5.4.3 | 编写需求规格说明书终稿 | manual | 1d? | 2022-05-18 08:00 | 2022-05-18 17:00 |  |  |

| ID | WBS | Task | Type | Duration | Start | Finish | Resources | Work | Cost |
| --- | --- | --- | --- | --- | --- | --- | --- | --- | --- |
| 104 | 3.1.6 | **需求规格审核** |  | 0d? | 2022-05-25 08:00 | 2022-05-25 08:00 |  | 45h |  |
| 105 | 3.1.6.1 | 小组评审会议 | manual | 1d? | 2022-05-25 08:00 | 2022-05-25 17:00 |  | 15h |  |
| 106 | 3.1.6.2 | 评审会议纪要 | manual | 1d? | 2022-05-25 08:00 | 2022-05-25 17:00 |  | 15h |  |
| 107 | 3.1.6.3 | 课堂评审 | manual | 1d? | 2022-05-25 08:00 | 2022-05-25 17:00 |  | 15h |  |
| 108 | 3.1.6.4 | 提交需求规格说明书 | manual | 1d? | 2022-05-25 08:00 | 2022-05-25 17:00 |  |  |  |
| 109 | 3.1.7 | 小组团建 | manual | 0.2d | 2022-04-28 08:00 | 2022-04-28 09:36 | 潘仲菁; 施芳怡; 杨庆贤; 余张龙; 周文涛 | 8h | 500 |
| 110 | 3.2 | **需求管理** |  | 11d | 2022-05-25 08:00 | 2022-06-08 17:00 |  | 105h |  |
| 111 | 3.2.1 | 确定变更控制过程 | manual | 1d | 2022-05-25 08:00 | 2022-05-25 17:00 |  | 15h |  |
| 112 | 3.2.2 | 建立变更控制委员会 | manual | 1d? | 2022-05-25 08:00 | 2022-05-25 17:00 |  | 15h |  |
| 113 | 3.2.3 | 变更影响分析 | manual | 1d? | 2022-05-25 08:00 | 2022-05-25 17:00 |  | 15h |  |
| 114 | 3.2.4 | 跟踪变更 | manual | 1d? | 2022-05-25 08:00 | 2022-05-25 17:00 |  | 15h |  |
| 115 | 3.2.5 | 编写文档基准版本和控制版本 | manual | 1d? | 2022-05-25 08:00 | 2022-05-25 17:00 |  | 15h |  |
| 116 | 3.2.6 | 维护变更历史记录 | manual | 1d? | 2022-05-25 08:00 | 2022-05-25 17:00 |  | 15h |  |
| 117 | 3.2.7 | 跟踪需求状态 | manual | 1d? | 2022-05-25 08:00 | 2022-05-25 17:00 |  | 15h |  |
| 118 | 3.2.8 | **需求变更文档** |  | 6d | 2022-06-01 08:00 | 2022-06-08 17:00 |  |  |  |
| 119 | 3.2.8.1 | <新任务> | manual | 1d? | 2022-06-01 08:00 | 2022-06-01 17:00 |  |  |  |
| 120 | 4 | **项目控制** |  | 85d? | 2022-03-03 17:00 | 2022-06-30 17:00 |  | 234h |  |
| 121 | 4.1 | 小组评审会议 | manual | 1d | 2022-03-03 17:00 | 2022-03-04 17:00 |  | 15h |  |
| 122 | 4.2 | 项目章程完善 | manual | 9d | 2022-03-03 17:00 | 2022-03-16 17:00 |  | 72h |  |
| 123 | 4.3 | 可行性分析完善 | manual | 9d | 2022-03-03 17:00 | 2022-03-16 17:00 |  | 72h |  |
| 124 | 4.4 | 需求工程计划完善 | manual | 0.12d | 2022-03-03 17:00 | 2022-03-04 09:00 |  | 15h |  |
| 125 | 4.5 | 翻转课堂完善 | manual | 1d? | 2022-03-03 17:00 | 2022-03-04 17:00 |  | 15h |  |
| 126 | 4.6 | 软件需求变更文档完善 | manual | 1d? | 2022-03-03 17:00 | 2022-03-04 17:00 |  | 15h |  |
| 127 | 4.7 | 软件需求规格书完善 | manual | 1d? | 2022-03-03 17:00 | 2022-03-04 17:00 |  | 15h |  |
| 128 | 4.8 | 项目总结报告完善 | manual | 1d? | 2022-03-03 17:00 | 2022-03-04 17:00 |  | 15h |  |

| ID | WBS | Task | Type | Duration | Start | Finish | Resources | Work | Cost |
| --- | --- | --- | --- | --- | --- | --- | --- | --- | --- |
| 129 | 5 | **项目收尾** |  | 17d? | 2022-06-08 08:00 | 2022-06-30 17:00 |  | 47h | 500 |
| 130 | 5.1 | 小组例会 | manual | 1d | 2022-06-08 08:00 | 2022-06-08 17:00 |  | 8h |  |
| 131 | 5.2 | 会议纪要 | manual | 1d? | 2022-06-08 08:00 | 2022-06-08 17:00 |  | 8h |  |
| 132 | 5.3 | **项目总结报告** |  | 6d | 2022-06-08 08:00 | 2022-06-15 17:00 |  | 15h |  |
| 133 | 5.3.1 | <新任务> | manual | 1d | 2012-08-09 08:00 | 2012-08-09 17:00 |  | 15h |  |
| 134 | 5.4 | **核查移交物** |  | 0d | 2022-06-15 08:00 | 2022-06-15 08:00 |  |  |  |
| 135 | 5.4.1 | <新任务> | manual | 1d | 2022-06-15 08:00 | 2022-06-15 17:00 |  |  |  |
| 136 | 5.5 | 小组团建 | manual | 0.2d | 2022-05-20 08:00 | 2022-05-20 09:36 | 潘仲菁; 施芳怡; 杨庆贤; 余张龙; 周文涛 | 8h | 500 |
| 137 | 5.6 | 课堂终审 | manual | 1d? | 2022-06-22 08:00 | 2022-06-22 17:00 |  | 8h |  |
| 138 | 5.7 | 提交项目总结报告 | manual | 1d? | 2022-06-22 08:00 | 2022-06-22 17:00 |  |  |  |
